# 软件开发

Schedule from MS Project, 2017-07-03 to 2017-08-31.
YONYOU

## Calendars

- 标准: Mon-Fri 08:00-12:00, 13:00-17:00; Sat-Sun off.

## Resources

| Resource | Group |
| --- | --- |
| PL-吴阳 |  |
| PM-张剑 |  |
| BA-程缙 | 售后服务 |
| PG-黄圆圆 | 备件管理 |
| PG-张磊 | 备件管理 |
| BA-朱明伟 | 备件管理 |
| PG-马彪 | 售后服务 |
| PG-陈正 | 售后服务 |
| DM-王瀚贤 |  |
| PG-张学富 |  |
| PG-舒应洪 |  |
| PG-孟翰林 |  |
| PG-TBD | 售后服务 |

## Schedule

| ID | WBS | Task | Type | Duration | Start | Finish | Total slack | Constraint | Resources | Work |
| --- | --- | --- | --- | --- | --- | --- | --- | --- | --- | --- |
| 1 | 1 | **备件管理** |  | 34d | 2017-07-03 | 2017-08-17 |  |  |  | 392h |
| 2 | 1.1 | **基础信息管理** |  | 29d | 2017-07-10 | 2017-08-17 |  |  |  | 88h |
| 3 | 1.1.1 | **配件基础信息维护（主机厂）** |  | 4d | 2017-07-10 | 2017-07-13 |  |  |  | 32h |
| 4 | 1.1.1.1 | 配件主数据维护 | milestone | 0d | 2017-07-10 | 2017-07-10 | 38d | finish no earlier than 2017-07-10 | PG-张磊 |  |
| 5 | 1.1.1.2 | 配件采购价格维护 | milestone | 0d | 2017-07-10 | 2017-07-10 | 39d | start no earlier than 2017-07-10 | PG-张磊 |  |
| 6 | 1.1.1.3 | 配件销售价格维护 |  | 1d | 2017-07-10 | 2017-07-10 | 38d | start no earlier than 2017-07-10 | PG-张磊 | 8h |
| 7 | 1.1.1.4 | 替换件关系维护 | milestone | 0d | 2017-07-11 | 2017-07-11 | 38d | start no earlier than 2017-07-11 | PG-张磊 |  |
| 8 | 1.1.1.5 | 配件变量维护[字典维护] | milestone | 0d | 2017-07-11 | 2017-07-11 | 38d | start no earlier than 2017-07-11 | PG-张磊 |  |
| 9 | 1.1.1.6 | 配件人员类型维护 |  | 1d | 2017-07-11 | 2017-07-11 | 37d | start no earlier than 2017-07-11 | PG-张磊 | 8h |
| 10 | 1.1.1.7 | 配件经销商信息维护 |  | 1d | 2017-07-12 | 2017-07-12 | 36d | start no earlier than 2017-07-12 | PG-张磊 | 8h |
| 11 | 1.1.1.8 | 节假日维护[工作日日历] |  | 1d | 2017-07-13 | 2017-07-13 | 35d | start no earlier than 2017-07-13 | PG-张磊 | 8h |
| 12 | 1.1.2 | **配件基础信息查询（经销商）** |  | 24d | 2017-07-14 | 2017-08-17 | 11d |  |  |  |
| 13 | 1.1.2.1 | 配件销售价格查询 | milestone | 0d | 2017-07-14 | 2017-07-14 | 35d | start no earlier than 2017-07-14 | PG-张磊 |  |
| 14 | 1.1.2.2 | 配件库存查询 | milestone | 0d | 2017-08-17 | 2017-08-17 | 11d | start no earlier than 2017-08-17 | PG-黄圆圆 |  |
| 15 | 1.1.2.3 | 配件主数据查询 | milestone | 0d | 2017-07-14 | 2017-07-14 | 35d | start no earlier than 2017-07-14 | PG-张磊 |  |
| 16 | 1.1.3 | **配件基础信息查询（主机厂）** |  | 1d | 2017-07-14 | 2017-07-14 | 34d |  |  | 8h |
| 17 | 1.1.3.1 | 配件采购价格查询 | milestone | 0d | 2017-07-14 | 2017-07-14 | 35d | start no earlier than 2017-07-14 | PG-张磊 |  |
| 18 | 1.1.3.2 | 配件销售价格查询 | milestone | 0d | 2017-07-14 | 2017-07-14 | 35d | start no earlier than 2017-07-14 | PG-张磊 |  |
| 19 | 1.1.3.3 | 配件主数据查询 |  | 1d | 2017-07-14 | 2017-07-14 | 34d | start no earlier than 2017-07-14 | PG-张磊 | 8h |
| 20 | 1.1.4 | **销售相关信息维护（主机厂）** |  | 0d | 2017-07-10 | 2017-07-10 | 39d |  |  |  |
| 21 | 1.1.4.1 | 配件采购关系维护（经销商采购） | milestone | 0d | 2017-07-10 | 2017-07-10 | 39d | start no earlier than 2017-07-10 | PG-黄圆圆 |  |
| 22 | 1.1.5 | **物流商管理** |  | 1d | 2017-07-10 | 2017-07-10 | 38d |  |  | 8h |
| 23 | 1.1.5.1 | 物流商维护 | milestone | 0d | 2017-07-10 | 2017-07-10 | 39d | start no earlier than 2017-07-10 | PG-黄圆圆 |  |
| 24 | 1.1.5.2 | 运输信息维护 | milestone | 0d | 2017-07-10 | 2017-07-10 | 39d | start no earlier than 2017-07-10 | PG-黄圆圆 |  |
| 25 | 1.1.5.3 | 运输方式与计价维护 |  | 1d | 2017-07-10 | 2017-07-10 | 38d | start no earlier than 2017-07-10 | PG-黄圆圆 | 8h |

| ID | WBS | Task | Type | Duration | Start | Finish | Total slack | Constraint | Resources | Work |
| --- | --- | --- | --- | --- | --- | --- | --- | --- | --- | --- |
| 26 | 1.1.6 | **仓库相关信息维护（主机厂）** |  | 1d | 2017-07-11 | 2017-07-11 |  |  |  | 8h |
| 27 | 1.1.6.1 | 配件仓库维护 | milestone | 0d | 2017-07-11 | 2017-07-11 | 38d | start no earlier than 2017-07-11 | PG-黄圆圆 |  |
| 28 | 1.1.6.2 | 配件货位关系维护 |  | 1d | 2017-07-11 | 2017-07-11 | 37d | start no earlier than 2017-07-11 | PG-黄圆圆 | 8h |
| 29 | 1.1.7 | **供应商管理（主机厂）** |  | 6d | 2017-07-12 | 2017-07-19 |  |  |  | 32h |
| 30 | 1.1.7.1 | 供应商信息维护 | milestone | 0d | 2017-07-17 | 2017-07-17 | 34d | start no earlier than 2017-07-17 | PG-张磊 |  |
| 31 | 1.1.7.2 | 供应商供货比例设置 |  | 1d | 2017-07-17 | 2017-07-17 | 33d | start no earlier than 2017-07-17 | PG-张磊 | 8h |
| 32 | 1.1.7.3 | 备件采购属性维护（车厂采购） |  | 1d | 2017-07-18 | 2017-07-18 | 32d | start no earlier than 2017-07-18 | PG-张磊 | 8h |
| 33 | 1.1.7.4 | 供应商配件标签管理 |  | 1d | 2017-07-12 | 2017-07-12 | 36d | start no earlier than 2017-07-12 | PG-黄圆圆 | 8h |
| 34 | 1.1.7.5 | 合同维护 | milestone | 0d | 2017-07-19 | 2017-07-19 | 32d | start no earlier than 2017-07-19 | PG-张磊 |  |
| 35 | 1.1.7.6 | 合同查询 |  | 1d | 2017-07-19 | 2017-07-19 | 31d | start no earlier than 2017-07-19 | PG-张磊 | 8h |
| 36 | 1.2 | **采购计划管理** |  | 7d | 2017-07-13 | 2017-07-21 | 29d |  |  | 56h |
| 37 | 1.2.1 | **采购计划管理（主机厂）** |  | 3d | 2017-07-13 | 2017-07-17 | 33d |  |  | 24h |
| 38 | 1.2.1.1 | 月度计划编制 |  | 1d | 2017-07-13 | 2017-07-13 | 35d | start no earlier than 2017-07-13 | PG-黄圆圆 | 8h |
| 39 | 1.2.1.2 | 周计划编制 |  | 1d | 2017-07-14 | 2017-07-14 | 34d | start no earlier than 2017-07-14 | PG-黄圆圆 | 8h |
| 40 | 1.2.1.3 | 计划员确认计划 | milestone | 0d | 2017-07-17 | 2017-07-17 | 34d | start no earlier than 2017-07-17 | PG-黄圆圆 |  |
| 41 | 1.2.1.4 | 审核计划 |  | 1d | 2017-07-17 | 2017-07-17 | 33d | start no earlier than 2017-07-17 | PG-黄圆圆 | 8h |
| 42 | 1.2.2 | **采购入库管理（主机厂）** |  | 4d | 2017-07-18 | 2017-07-21 | 29d |  |  | 32h |
| 43 | 1.2.2.1 | 配件采购订单 |  | 1d | 2017-07-18 | 2017-07-18 | 32d | start no earlier than 2017-07-18 | PG-黄圆圆 | 8h |
| 44 | 1.2.2.2 | 采购入库确认 |  | 1d | 2017-07-19 | 2017-07-19 | 31d | start no earlier than 2017-07-19 | PG-黄圆圆 | 8h |
| 45 | 1.2.2.3 | 配件标签打印 | milestone | 0d | 2017-07-20 | 2017-07-20 | 31d | start no earlier than 2017-07-20 | PG-黄圆圆 |  |
| 46 | 1.2.2.4 | 箱标签打印 |  | 1d | 2017-07-20 | 2017-07-20 | 30d | start no earlier than 2017-07-20 | PG-黄圆圆 | 8h |
| 47 | 1.2.2.5 | 生成上架单 | milestone | 0d | 2017-07-21 | 2017-07-21 | 30d | start no earlier than 2017-07-21 | PG-黄圆圆 |  |
| 48 | 1.2.2.6 | 分包单查询 | milestone | 0d | 2017-07-21 | 2017-07-21 | 30d | start no earlier than 2017-07-21 | PG-黄圆圆 |  |
| 49 | 1.2.2.7 | 欠货单查询 |  | 1d | 2017-07-21 | 2017-07-21 | 29d | start no earlier than 2017-07-21 | PG-黄圆圆 | 8h |

| ID | WBS | Task | Type | Duration | Start | Finish | Total slack | Constraint | Resources | Work |
| --- | --- | --- | --- | --- | --- | --- | --- | --- | --- | --- |
| 50 | 1.3 | **车厂销售管理** |  | 11d? | 2017-07-31 | 2017-08-15 | 13d |  |  | 112h |
| 51 | 1.3.1 | **总部销售管理（主机厂）** |  | 2d | 2017-07-31 | 2017-08-01 | 22d |  |  | 16h |
| 52 | 1.3.1.1 | 配件订单审核 |  | 1d | 2017-07-31 | 2017-07-31 | 23d | start no earlier than 2017-07-31 | PG-黄圆圆 | 8h |
| 53 | 1.3.1.2 | 配件销售单查询 | milestone | 0d | 2017-07-31 | 2017-07-31 | 24d | start no earlier than 2017-07-31 | PG-黄圆圆 |  |
| 54 | 1.3.1.3 | BO单处理 | milestone | 0d | 2017-08-01 | 2017-08-01 | 23d | start no earlier than 2017-08-01 | PG-黄圆圆 |  |
| 55 | 1.3.1.4 | BO单查询 |  | 1d | 2017-08-01 | 2017-08-01 | 22d | start no earlier than 2017-08-01 | PG-黄圆圆 | 8h |
| 56 | 1.3.2 | **销售出库管理（主机厂）** |  | 9d? | 2017-08-02 | 2017-08-15 | 13d |  |  | 72h |
| 57 | 1.3.2.1 | 捡货单管理 |  | 2d | 2017-08-02 | 2017-08-03 | 20d | start no earlier than 2017-08-02 | PG-黄圆圆 | 16h |
| 58 | 1.3.2.2 | 现场BO单管理 |  | 1d? | 2017-08-04 | 2017-08-04 | 19d | start no earlier than 2017-08-04 |  |  |
| 59 | 1.3.2.3 | 装箱单管理 |  | 1d | 2017-08-07 | 2017-08-07 | 18d | finish no earlier than 2017-08-07 | PG-黄圆圆 | 8h |
| 60 | 1.3.2.4 | 打印去向唛头 | milestone | 0d | 2017-08-08 | 2017-08-08 | 18d | start no earlier than 2017-08-08 | PG-黄圆圆 |  |
| 61 | 1.3.2.5 | 装箱清单打印 |  | 1d | 2017-08-08 | 2017-08-08 | 17d | start no earlier than 2017-08-08 | PG-黄圆圆 | 8h |
| 62 | 1.3.2.6 | 装箱结果修改 |  | 1d | 2017-08-09 | 2017-08-09 | 16d | finish no earlier than 2017-08-09 | PG-黄圆圆 | 8h |
| 63 | 1.3.2.7 | 配件出库单 | milestone | 0d | 2017-08-10 | 2017-08-10 | 16d | start no earlier than 2017-08-10 | PG-黄圆圆 |  |
| 64 | 1.3.2.8 | 出库单查询 |  | 1d | 2017-08-10 | 2017-08-10 | 15d | start no earlier than 2017-08-10 | PG-黄圆圆 | 8h |
| 65 | 1.3.2.9 | 配件发运单 |  | 1d | 2017-08-11 | 2017-08-11 | 14d | start no earlier than 2017-08-11 | PG-黄圆圆 | 8h |
| 66 | 1.3.2.10 | 配件发运交接 |  | 1d | 2017-08-14 | 2017-08-14 | 13d | start no earlier than 2017-08-14 | PG-黄圆圆 | 8h |
| 67 | 1.3.2.11 | 异常入库查询 |  | 1d | 2017-08-07 | 2017-08-07 | 18d | start no earlier than 2017-08-07 | PG-张磊 | 8h |
| 68 | 1.3.2.12 | 配件订单查询 | milestone | 0d | 2017-08-15 | 2017-08-15 | 13d | start no earlier than 2017-08-15 | PG-黄圆圆 |  |
| 69 | 1.3.3 | **退货管理（主机厂）** |  | 4d | 2017-08-01 | 2017-08-04 | 19d |  |  | 24h |
| 70 | 1.3.3.1 | 销售退货审核 | milestone | 0d | 2017-08-01 | 2017-08-01 | 23d | start no earlier than 2017-08-01 | PG-张磊 |  |
| 71 | 1.3.3.2 | 销售退货查询 | milestone | 0d | 2017-08-01 | 2017-08-01 | 23d | start no earlier than 2017-08-01 | PG-张磊 |  |
| 72 | 1.3.3.3 | 销售退货入库 |  | 1d | 2017-08-01 | 2017-08-01 | 22d | start no earlier than 2017-08-01 | PG-张磊 | 8h |
| 73 | 1.3.3.4 | 采购退货申请 | milestone | 0d | 2017-08-03 | 2017-08-03 | 21d | start no earlier than 2017-08-03 | PG-张磊 |  |
| 74 | 1.3.3.5 | 采购退货审核 |  | 1d | 2017-08-03 | 2017-08-03 | 20d | start no earlier than 2017-08-03 | PG-张磊 | 8h |
| 75 | 1.3.3.6 | 采购退货出库 | milestone | 0d | 2017-08-04 | 2017-08-04 | 20d | start no earlier than 2017-08-04 | PG-张磊 |  |
| 76 | 1.3.3.7 | 供应商签收 | milestone | 0d | 2017-08-04 | 2017-08-04 | 20d | start no earlier than 2017-08-04 | PG-张磊 |  |
| 77 | 1.3.3.8 | 采购退货查询 |  | 1d | 2017-08-04 | 2017-08-04 | 19d | start no earlier than 2017-08-04 | PG-张磊 | 8h |

| ID | WBS | Task | Type | Duration | Start | Finish | Total slack | Constraint | Resources | Work |
| --- | --- | --- | --- | --- | --- | --- | --- | --- | --- | --- |
| 78 | 1.4 | **仓储管理** |  | 21d | 2017-07-20 | 2017-08-17 | 10d |  |  | 48h |
| 79 | 1.4.1 | **配件状态变更（主机厂）** |  | 1d | 2017-07-20 | 2017-07-20 | 30d |  |  | 8h |
| 80 | 1.4.1.1 | 配件库存状态变更 | milestone | 0d | 2017-07-20 | 2017-07-20 | 31d | start no earlier than 2017-07-20 | PG-张磊 |  |
| 81 | 1.4.1.2 | 配件来货错误处理 | milestone | 0d | 2017-07-20 | 2017-07-20 | 31d | start no earlier than 2017-07-20 | PG-张磊 |  |
| 82 | 1.4.1.3 | 配件质量问题处理 | milestone | 0d | 2017-07-20 | 2017-07-20 | 31d | start no earlier than 2017-07-20 | PG-张磊 |  |
| 83 | 1.4.1.4 | 库存状态变更查询 |  | 1d | 2017-07-20 | 2017-07-20 | 30d | start no earlier than 2017-07-20 | PG-张磊 | 8h |
| 84 | 1.4.2 | **配件盘点管理（主机厂）** |  | 1d | 2017-07-21 | 2017-07-24 | 29d |  |  | 8h |
| 85 | 1.4.2.1 | 库存盘点新增 | milestone | 0d | 2017-07-21 | 2017-07-21 | 30d | start no earlier than 2017-07-21 | PG-张磊 |  |
| 86 | 1.4.2.2 | 库存盘点调整申请 | milestone | 0d | 2017-07-21 | 2017-07-21 | 30d | start no earlier than 2017-07-21 | PG-张磊 |  |
| 87 | 1.4.2.3 | 库存盘点调整审核 | milestone | 0d | 2017-07-21 | 2017-07-21 | 30d | start no earlier than 2017-07-21 | PG-张磊 |  |
| 88 | 1.4.2.4 | 库存盘点调整处理 | milestone | 0d | 2017-07-21 | 2017-07-21 | 30d | start no earlier than 2017-07-21 | PG-张磊 |  |
| 89 | 1.4.2.5 | 库存盘点调整查询 |  | 1d | 2017-07-21 | 2017-07-21 | 29d | start no earlier than 2017-07-21 | PG-张磊 | 8h |
| 90 | 1.4.2.6 | 库存盘点封存处理 | milestone | 0d | 2017-07-24 | 2017-07-24 | 29d | start no earlier than 2017-07-24 | PG-张磊 |  |
| 91 | 1.4.3 | **库存调整管理** |  | 1d | 2017-07-24 | 2017-07-24 | 28d |  |  | 8h |
| 92 | 1.4.3.1 | 库存调整申请 | milestone | 0d | 2017-07-24 | 2017-07-24 | 29d | start no earlier than 2017-07-24 | PG-张磊 |  |
| 93 | 1.4.3.2 | 库存调整审核 |  | 1d | 2017-07-24 | 2017-07-24 | 28d | start no earlier than 2017-07-24 | PG-张磊 | 8h |
| 94 | 1.4.4 | **仓储管理（主机厂）** |  | 1d | 2017-08-17 | 2017-08-17 | 10d |  |  | 8h |
| 95 | 1.4.4.1 | 配件库存查询 |  | 1d | 2017-08-17 | 2017-08-17 | 10d | start no earlier than 2017-08-17 | PG-黄圆圆 | 8h |
| 96 | 1.4.5 | **调拨管理（主机厂）** |  | 2d | 2017-07-25 | 2017-07-26 | 26d |  |  | 16h |
| 97 | 1.4.5.1 | 调拨单申请 | milestone | 0d | 2017-07-25 | 2017-07-25 | 28d | start no earlier than 2017-07-25 | PG-张磊 |  |
| 98 | 1.4.5.2 | 调拨单审核 |  | 1d | 2017-07-25 | 2017-07-25 | 27d | start no earlier than 2017-07-25 | PG-张磊 | 8h |
| 99 | 1.4.5.3 | 调拨出库 | milestone | 0d | 2017-07-26 | 2017-07-26 | 27d | start no earlier than 2017-07-26 | PG-张磊 |  |
| 100 | 1.4.5.4 | 调拨入库 | milestone | 0d | 2017-07-26 | 2017-07-26 | 27d | start no earlier than 2017-07-26 | PG-张磊 |  |
| 101 | 1.4.5.5 | 调拨单查询 |  | 1d | 2017-07-26 | 2017-07-26 | 26d | start no earlier than 2017-07-26 | PG-张磊 | 8h |

| ID | WBS | Task | Type | Duration | Start | Finish | Total slack | Constraint | Resources | Work |
| --- | --- | --- | --- | --- | --- | --- | --- | --- | --- | --- |
| 102 | 1.5 | **配件仓储管理** |  | 0d | 2017-08-01 | 2017-08-01 | 23d |  |  |  |
| 103 | 1.5.1 | **配件退货管理（经销商）** |  | 0d | 2017-08-01 | 2017-08-01 | 23d |  |  |  |
| 104 | 1.5.1.1 | 销售退货申请 | milestone | 0d | 2017-08-01 | 2017-08-01 | 23d | start no earlier than 2017-08-01 | PG-张磊 |  |
| 105 | 1.5.1.2 | 销售退货查询 | milestone | 0d | 2017-08-01 | 2017-08-01 | 23d | start no earlier than 2017-08-01 | PG-张磊 |  |
| 106 | 1.5.1.3 | 销售退货出库 | milestone | 0d | 2017-08-01 | 2017-08-01 | 23d | start no earlier than 2017-08-01 | PG-张磊 |  |
| 107 | 1.6 | **配件财务管理（主机厂）** |  | 0d | 2017-07-27 | 2017-07-27 | 26d |  |  |  |
| 108 | 1.6.1 | 经销商资金审核 | milestone | 0d | 2017-07-27 | 2017-07-27 | 26d | start no earlier than 2017-07-27 | PG-张磊 |  |
| 109 | 1.6.2 | 经销商账户查询 | milestone | 0d | 2017-07-27 | 2017-07-27 | 26d | start no earlier than 2017-07-27 | PG-张磊 |  |
| 110 | 1.6.3 | 财务金税开票 | milestone | 0d | 2017-07-27 | 2017-07-27 | 26d | start no earlier than 2017-07-27 | PG-张磊 |  |
| 111 | 1.6.4 | 财务金税发票导入 | milestone | 0d | 2017-07-27 | 2017-07-27 | 26d | start no earlier than 2017-07-27 | PG-张磊 |  |
| 112 | 1.7 | **配件财务管理（经销商）** |  | 1d | 2017-07-27 | 2017-07-27 | 25d |  |  | 8h |
| 113 | 1.7.1 | 经销商账户查询 | milestone | 0d | 2017-07-27 | 2017-07-27 | 26d | start no earlier than 2017-07-27 | PG-张磊 |  |
| 114 | 1.7.2 | 经销商打款申请 |  | 1d | 2017-07-27 | 2017-07-27 | 25d | start no earlier than 2017-07-27 | PG-张磊 | 8h |
| 115 | 1.8 | **配件领用管理（主机厂）** |  | 1d | 2017-07-28 | 2017-07-28 | 24d |  |  | 8h |
| 116 | 1.8.1 | 配件零售单 | milestone | 0d | 2017-07-28 | 2017-07-28 | 25d | start no earlier than 2017-07-28 | PG-张磊 |  |
| 117 | 1.8.2 | 配件领用单 | milestone | 0d | 2017-07-28 | 2017-07-28 | 25d | start no earlier than 2017-07-28 | PG-张磊 |  |
| 118 | 1.8.3 | 配件领用出库 |  | 1d | 2017-07-28 | 2017-07-28 | 24d | start no earlier than 2017-07-28 | PG-张磊 | 8h |
| 119 | 1.9 | **月度目标管理（主机厂）** |  | 0d | 2017-08-16 | 2017-08-16 | 12d |  |  |  |
| 120 | 1.9.1 | 经销商月度目标导入 | milestone | 0d | 2017-08-16 | 2017-08-16 | 12d | start no earlier than 2017-08-16 | PG-黄圆圆 |  |
| 121 | 1.9.2 | 经销商月度查询 | milestone | 0d | 2017-08-16 | 2017-08-16 | 12d | start no earlier than 2017-08-16 | PG-黄圆圆 |  |
| 122 | 1.10 | **月度目标管理（经销商）** |  | 1d | 2017-08-16 | 2017-08-16 |  |  |  | 8h |
| 123 | 1.10.1 | 经销商月度查询 |  | 1d | 2017-08-16 | 2017-08-16 | 11d | start no earlier than 2017-08-16 | PG-黄圆圆 | 8h |
| 124 | 1.11 | **配件调拨管理（经销商）** |  | 1d | 2017-08-02 | 2017-08-02 | 21d |  |  | 8h |
| 125 | 1.11.1 | 调拨单申请 | milestone | 0d | 2017-08-02 | 2017-08-02 | 22d | start no earlier than 2017-08-02 | PG-张磊 |  |
| 126 | 1.11.2 | 调拨单审核 | milestone | 0d | 2017-08-02 | 2017-08-02 | 22d | start no earlier than 2017-08-02 | PG-张磊 |  |
| 127 | 1.11.3 | 调拨出库 | milestone | 0d | 2017-08-02 | 2017-08-02 | 22d | start no earlier than 2017-08-02 | PG-张磊 |  |
| 128 | 1.11.4 | 调拨入库 | milestone | 0d | 2017-08-02 | 2017-08-02 | 22d | start no earlier than 2017-08-02 | PG-张磊 |  |
| 129 | 1.11.5 | 调拨单查询 |  | 1d | 2017-08-02 | 2017-08-02 | 21d | start no earlier than 2017-08-02 | PG-张磊 | 8h |

| ID | WBS | Task | Type | Duration | Start | Finish | Total slack | Constraint | Resources | Work |
| --- | --- | --- | --- | --- | --- | --- | --- | --- | --- | --- |
| 130 | 1.12 | **配件采购管理（经销商）** |  | 17d | 2017-07-24 | 2017-08-15 | 12d |  |  | 56h |
| 131 | 1.12.1 | 常规订单提报 |  | 1d | 2017-07-24 | 2017-07-24 | 28d | start no earlier than 2017-07-24 | PG-黄圆圆 | 8h |
| 132 | 1.12.2 | 紧急订单提报 |  | 1d | 2017-07-25 | 2017-07-25 | 27d | start no earlier than 2017-07-25 | PG-黄圆圆 | 8h |
| 133 | 1.12.3 | 促销订单提报 |  | 1d | 2017-07-26 | 2017-07-26 | 26d | start no earlier than 2017-07-26 | PG-黄圆圆 | 8h |
| 134 | 1.12.4 | 委托订单提报 |  | 1d | 2017-07-27 | 2017-07-27 | 25d | start no earlier than 2017-07-27 | PG-黄圆圆 | 8h |
| 135 | 1.12.5 | 销售采购订单提报 |  | 1d | 2017-07-28 | 2017-07-28 | 24d | start no earlier than 2017-07-28 | PG-黄圆圆 | 8h |
| 136 | 1.12.6 | 配件接收入库 | milestone | 0d | 2017-07-31 | 2017-07-31 | 24d | start no earlier than 2017-07-31 | PG-张磊 |  |
| 137 | 1.12.7 | 配件入库单查询 |  | 1d | 2017-07-31 | 2017-07-31 | 23d | start no earlier than 2017-07-31 | PG-张磊 | 8h |
| 138 | 1.12.8 | 配件订单查询 |  | 1d | 2017-08-15 | 2017-08-15 | 12d | start no earlier than 2017-08-15 | PG-黄圆圆 | 8h |
| 139 | 2 | **售后服务** |  | 32d | 2017-07-03 | 2017-08-15 | 0d |  |  | 408h |
| 140 | 2.1 | **基础数据管理（主机厂）** |  | 14d | 2017-07-03 | 2017-07-20 |  |  |  | 80h |
| 141 | 2.1.1 | 首保信息 | milestone | 0d | 2017-07-10 | 2017-07-10 | 39d | start no earlier than 2017-07-10 | PG-马彪 |  |
| 142 | 2.1.2 | 工时定额维护 | milestone | 0d | 2017-07-10 | 2017-07-10 | 39d | start no earlier than 2017-07-10 | PG-马彪 |  |
| 143 | 2.1.3 | 工时单价维护 |  | 1d | 2017-07-10 | 2017-07-10 | 38d | start no earlier than 2017-07-10 | PG-马彪 | 8h |
| 144 | 2.1.4 | 备件加价率维护 | milestone | 0d | 2017-07-11 | 2017-07-11 | 38d | start no earlier than 2017-07-11 | PG-马彪 |  |
| 145 | 2.1.5 | 外出救援里程交通费维护 | milestone | 0d | 2017-07-11 | 2017-07-11 | 38d | start no earlier than 2017-07-11 | PG-马彪 |  |
| 146 | 2.1.6 | 外出费用类型 |  | 1d | 2017-07-11 | 2017-07-11 | 37d | start no earlier than 2017-07-11 | PG-马彪 | 8h |
| 147 | 2.1.7 | 供应商索赔比例 | milestone | 0d | 2017-07-12 | 2017-07-12 | 37d | start no earlier than 2017-07-12 | PG-马彪 |  |
| 148 | 2.1.8 | 供应商出库规定天数维护 | milestone | 0d | 2017-07-12 | 2017-07-12 | 37d | start no earlier than 2017-07-12 | PG-马彪 |  |
| 149 | 2.1.9 | 预授权级别维护 |  | 1d | 2017-07-12 | 2017-07-12 | 36d | start no earlier than 2017-07-12 | PG-马彪 | 8h |
| 150 | 2.1.10 | 预授权人员维护 | milestone | 0d | 2017-07-13 | 2017-07-13 | 36d | start no earlier than 2017-07-13 | PG-马彪 |  |
| 151 | 2.1.11 | 预授权规则维护 | milestone | 0d | 2017-07-13 | 2017-07-13 | 36d | start no earlier than 2017-07-13 | PG-马彪 |  |
| 152 | 2.1.12 | 易损件维护 |  | 1d | 2017-07-13 | 2017-07-13 | 35d | start no earlier than 2017-07-13 | PG-马彪 | 8h |
| 153 | 2.1.13 | 监控工时维护 | milestone | 0d | 2017-07-14 | 2017-07-14 | 35d | start no earlier than 2017-07-14 | PG-马彪 |  |
| 154 | 2.1.14 | 监控配件维护 | milestone | 0d | 2017-07-14 | 2017-07-14 | 35d | start no earlier than 2017-07-14 | PG-马彪 |  |
| 155 | 2.1.15 | 预警规则时间维护 |  | 1d | 2017-07-14 | 2017-07-14 | 34d | start no earlier than 2017-07-14 | PG-马彪 | 8h |
| 156 | 2.1.16 | 总成维护 | milestone | 0d | 2017-07-17 | 2017-07-17 | 34d | start no earlier than 2017-07-17 | PG-马彪 |  |
| 157 | 2.1.17 | 故障法定名称维护 | milestone | 0d | 2017-07-17 | 2017-07-17 | 34d | start no earlier than 2017-07-17 | PG-马彪 |  |
| 158 | 2.1.18 | 零件法定名称维护 |  | 1d | 2017-07-17 | 2017-07-17 | 33d | start no earlier than 2017-07-17 | PG-马彪 | 8h |
| 159 | 2.1.19 | 失效模式维护 | milestone | 0d | 2017-07-18 | 2017-07-18 | 33d | start no earlier than 2017-07-18 | PG-马彪 |  |
| 160 | 2.1.20 | 三包预警规则设置 | milestone | 0d | 2017-07-18 | 2017-07-18 | 33d | start no earlier than 2017-07-18 | PG-马彪 |  |
| 161 | 2.1.21 | 三包策略维护 |  | 1d | 2017-07-18 | 2017-07-18 | 32d | start no earlier than 2017-07-18 | PG-马彪 | 8h |
| 162 | 2.1.22 | 三包规则维护 | milestone | 0d | 2017-07-19 | 2017-07-19 | 32d | start no earlier than 2017-07-19 | PG-马彪 |  |
| 163 | 2.1.23 | 服务站信息维护 | milestone | 0d | 2017-07-19 | 2017-07-19 | 32d | start no earlier than 2017-07-19 | PG-马彪 |  |
| 164 | 2.1.24 | 服务站人员信息维护 |  | 1d | 2017-07-19 | 2017-07-19 | 31d | start no earlier than 2017-07-19 | PG-马彪 | 8h |
| 165 | 2.1.25 | 回访术语维护 | milestone | 0d | 2017-07-10 | 2017-07-10 | 39d | start no earlier than 2017-07-10 | PG-TBD |  |
| 166 | 2.1.26 | 备件三包期维护 | milestone | 0d | 2017-07-20 | 2017-07-20 | 31d | start no earlier than 2017-07-20 | PG-马彪 |  |
| 167 | 2.1.27 | 旧件是否回运维护 | milestone | 0d | 2017-07-10 | 2017-07-10 | 39d | start no earlier than 2017-07-10 | PG-TBD |  |
| 168 | 2.1.28 | 旧件抵扣原因维护 | milestone | 0d | 2017-07-10 | 2017-07-10 | 39d | start no earlier than 2017-07-10 | PG-TBD |  |
| 169 | 2.1.29 | 工时奖惩 |  | 1d | 2017-07-20 | 2017-07-20 | 30d | start no earlier than 2017-07-20 | PG-马彪 | 8h |
| 170 | 2.1.30 | 售后车型组维护 |  | 1d | 2017-07-10 | 2017-07-10 | 38d | start no earlier than 2017-07-10 | PG-TBD | 8h |

| ID | WBS | Task | Type | Duration | Start | Finish | Total slack | Constraint | Resources | Work |
| --- | --- | --- | --- | --- | --- | --- | --- | --- | --- | --- |
| 171 | 2.2 | **服务活动管理（主机厂）** |  | 0d | 2017-07-11 | 2017-07-11 | 38d |  |  |  |
| 172 | 2.2.1 | 服务活动管理 | milestone | 0d | 2017-07-11 | 2017-07-11 | 38d | start no earlier than 2017-07-11 | PG-TBD |  |
| 173 | 2.3 | **服务活动管理（服务站）** |  | 3d | 2017-07-11 | 2017-07-13 | 35d |  |  | 24h |
| 174 | 2.3.1 | 服务活动申请/查看 |  | 3d | 2017-07-11 | 2017-07-13 | 35d | finish no earlier than 2017-07-13 | PG-TBD | 24h |
| 175 | 2.4 | **车辆信息管理（主机厂）** |  | 1d | 2017-07-14 | 2017-07-17 | 34d |  |  | 8h |
| 176 | 2.4.1 | 车辆信息变更审核 | milestone | 0d | 2017-07-14 | 2017-07-14 | 35d | start no earlier than 2017-07-14 | PG-TBD |  |
| 177 | 2.4.2 | 车辆车主信息查询 | milestone | 0d | 2017-07-14 | 2017-07-14 | 35d | start no earlier than 2017-07-14 | PG-TBD |  |
| 178 | 2.4.3 | 车辆历史信息查询 |  | 1d | 2017-07-14 | 2017-07-14 | 34d | start no earlier than 2017-07-14 | PG-TBD | 8h |
| 179 | 2.4.4 | PIN码查询回复 | milestone | 0d | 2017-07-17 | 2017-07-17 | 34d | start no earlier than 2017-07-17 | PG-TBD |  |
| 180 | 2.5 | **车辆信息管理（服务站）** |  | 1d | 2017-07-17 | 2017-07-17 | 33d |  |  | 8h |
| 181 | 2.5.1 | 车辆信息变更申请 | milestone | 0d | 2017-07-17 | 2017-07-17 | 34d | start no earlier than 2017-07-17 | PG-TBD |  |
| 182 | 2.5.2 | PIN码查询申请 |  | 1d | 2017-07-17 | 2017-07-17 | 33d | start no earlier than 2017-07-17 | PG-TBD | 8h |
| 183 | 2.6 | **特殊费用管理（主机厂）** |  | 3d | 2017-07-18 | 2017-07-20 | 30d |  |  | 8h |
| 184 | 2.6.1 | 善意索赔审核 | milestone | 0d | 2017-07-20 | 2017-07-20 | 31d | start no earlier than 2017-07-20 | PG-TBD |  |
| 185 | 2.6.2 | 善意索赔查询 |  | 1d | 2017-07-20 | 2017-07-20 | 30d | start no earlier than 2017-07-20 | PG-TBD | 8h |
| 186 | 2.6.3 | 正负激励管理 | milestone | 0d | 2017-07-18 | 2017-07-18 | 33d | start no earlier than 2017-07-18 | PG-TBD |  |
| 187 | 2.7 | **特殊费用管理（服务站）** |  | 2d | 2017-07-18 | 2017-07-19 | 31d |  |  | 16h |
| 188 | 2.7.1 | 善意索赔提报 | milestone | 0d | 2017-07-19 | 2017-07-19 | 32d | start no earlier than 2017-07-19 | PG-TBD |  |
| 189 | 2.7.2 | 善意索赔查询 |  | 1d | 2017-07-19 | 2017-07-19 | 31d | start no earlier than 2017-07-19 | PG-TBD | 8h |
| 190 | 2.7.3 | 行政扣款单查询 | milestone | 0d | 2017-07-18 | 2017-07-18 | 33d | start no earlier than 2017-07-18 | PG-TBD |  |
| 191 | 2.7.4 | 正负激励查询 |  | 1d | 2017-07-18 | 2017-07-18 | 32d | start no earlier than 2017-07-18 | PG-TBD | 8h |
| 192 | 2.8 | **质量信息管理（主机厂）** |  | 0d | 2017-07-24 | 2017-07-24 | 29d |  |  |  |
| 193 | 2.8.1 | 市场质量信息反馈审核 | milestone | 0d | 2017-07-24 | 2017-07-24 | 29d | start no earlier than 2017-07-24 | PG-TBD |  |
| 194 | 2.9 | **质量信息管理（服务站）** |  | 2d | 2017-07-21 | 2017-07-24 | 28d |  |  | 16h |
| 195 | 2.9.1 | 市场质量信息反馈申报 |  | 2d | 2017-07-21 | 2017-07-24 | 28d | start no earlier than 2017-07-21 | PG-TBD | 16h |

| ID | WBS | Task | Type | Duration | Start | Finish | Total slack | Constraint | Resources | Work |
| --- | --- | --- | --- | --- | --- | --- | --- | --- | --- | --- |
| 196 | 2.10 | **维修登记（服务站）** |  | 3d | 2017-07-21 | 2017-07-26 | 27d |  |  | 24h |
| 197 | 2.10.1 | 维修工单登记 |  | 2d | 2017-07-21 | 2017-07-24 | 28d | start no earlier than 2017-07-21 | PG-马彪 | 16h |
| 198 | 2.10.2 | 维修工单结算 |  | 1d | 2017-07-25 | 2017-07-25 | 27d | start no earlier than 2017-07-25 | PG-马彪 | 8h |
| 199 | 2.10.3 | 维修工单废弃 | milestone | 0d | 2017-07-26 | 2017-07-26 | 27d | start no earlier than 2017-07-26 | PG-马彪 |  |
| 200 | 2.11 | **索赔管理** |  | 15d | 2017-07-26 | 2017-08-15 | 12d |  |  | 104h |
| 201 | 2.11.1 | **工单查询（主机厂）** |  | 1d | 2017-07-26 | 2017-07-26 | 26d |  |  | 8h |
| 202 | 2.11.1.1 | 维修工单查询 |  | 1d | 2017-07-26 | 2017-07-26 | 26d | start no earlier than 2017-07-26 | PG-马彪 | 8h |
| 203 | 2.11.2 | **预授权管理（主机厂）** |  | 1d | 2017-07-27 | 2017-07-27 | 25d |  |  | 8h |
| 204 | 2.11.2.1 | 预授权审核 | milestone | 0d | 2017-07-27 | 2017-07-27 | 26d | start no earlier than 2017-07-27 | PG-马彪 |  |
| 205 | 2.11.2.2 | 预授权查询 |  | 1d | 2017-07-27 | 2017-07-27 | 25d | start no earlier than 2017-07-27 | PG-马彪 | 8h |
| 206 | 2.11.3 | **外出救援管理（主机厂）** |  | 0d | 2017-07-28 | 2017-07-28 | 25d |  |  |  |
| 207 | 2.11.3.1 | 外出救援申请审核 | milestone | 0d | 2017-07-28 | 2017-07-28 | 25d | start no earlier than 2017-07-28 | PG-马彪 |  |
| 208 | 2.11.4 | **外出救援管理（服务站）** |  | 1d | 2017-07-28 | 2017-07-28 | 24d |  |  | 8h |
| 209 | 2.11.4.1 | 外出救援申请/查看 |  | 1d | 2017-07-28 | 2017-07-28 | 24d | start no earlier than 2017-07-28 | PG-马彪 | 8h |
| 210 | 2.11.5 | **索赔单管理（主机厂）** |  | 0d | 2017-07-31 | 2017-07-31 | 24d |  |  |  |
| 211 | 2.11.5.1 | 索赔单审核 | milestone | 0d | 2017-07-31 | 2017-07-31 | 24d | start no earlier than 2017-07-31 | PG-马彪 |  |
| 212 | 2.11.5.2 | 索赔单查询 | milestone | 0d | 2017-07-31 | 2017-07-31 | 24d | start no earlier than 2017-07-31 | PG-马彪 |  |
| 213 | 2.11.6 | **索赔单管理（服务站）** |  | 5d | 2017-08-01 | 2017-08-08 | 18d |  |  | 32h |
| 214 | 2.11.6.1 | 索赔单编辑 |  | 2d | 2017-08-01 | 2017-08-02 | 21d | start no earlier than 2017-08-01 | PG-马彪 | 16h |
| 215 | 2.11.6.2 | 索赔单废弃 |  | 1d | 2017-08-03 | 2017-08-03 | 20d | start no earlier than 2017-08-03 | PG-马彪 | 8h |
| 216 | 2.11.6.3 | 索赔单上报 |  | 1d | 2017-08-04 | 2017-08-04 | 19d | finish no earlier than 2017-08-04 | PG-马彪 | 8h |
| 217 | 2.11.6.4 | 索赔单状态跟踪 | milestone | 0d | 2017-08-08 | 2017-08-08 | 18d | start no earlier than 2017-08-08 | PG-马彪 |  |
| 218 | 2.11.7 | **结算管理（主机厂）** |  | 6d | 2017-08-08 | 2017-08-15 | 12d |  |  | 32h |
| 219 | 2.11.7.1 | 旧件运费审核 |  | 1d | 2017-08-08 | 2017-08-08 | 17d | start no earlier than 2017-08-08 | PG-马彪 | 8h |
| 220 | 2.11.7.2 | 三包开票汇总确认及下发 |  | 2d | 2017-08-09 | 2017-08-10 | 15d | start no earlier than 2017-08-09 | PG-马彪 | 16h |
| 221 | 2.11.7.3 | 三包单结算收票 |  | 1d | 2017-08-15 | 2017-08-15 | 12d | start no earlier than 2017-08-15 | PG-马彪 | 8h |

| ID | WBS | Task | Type | Duration | Start | Finish | Total slack | Constraint | Resources | Work |
| --- | --- | --- | --- | --- | --- | --- | --- | --- | --- | --- |
| 222 | 2.11.8 | **结算管理（服务站）** |  | 2d | 2017-08-11 | 2017-08-14 | 13d |  |  | 16h |
| 223 | 2.11.8.1 | 三包费开票确认 |  | 1d | 2017-08-11 | 2017-08-11 | 14d | start no earlier than 2017-08-11 | PG-马彪 | 8h |
| 224 | 2.11.8.2 | 三包费发票填报 |  | 1d | 2017-08-14 | 2017-08-14 | 13d | start no earlier than 2017-08-14 | PG-马彪 | 8h |
| 225 | 2.12 | **旧件管理（主机厂）** |  | 5d | 2017-08-03 | 2017-08-09 | 16d |  |  | 40h |
| 226 | 2.12.1 | 旧件签收 |  | 2d | 2017-08-03 | 2017-08-04 | 19d | start no earlier than 2017-08-03 | PG-TBD | 16h |
| 227 | 2.12.2 | 旧件审核入库及抵扣 |  | 2d | 2017-08-07 | 2017-08-08 | 17d | start no earlier than 2017-08-07 | PG-TBD | 16h |
| 228 | 2.12.3 | 旧件库存查询 | milestone | 0d | 2017-08-09 | 2017-08-09 | 17d | start no earlier than 2017-08-09 | PG-TBD |  |
| 229 | 2.12.4 | 二次抵扣 |  | 1d | 2017-08-09 | 2017-08-09 | 16d | start no earlier than 2017-08-09 | PG-TBD | 8h |
| 230 | 2.13 | **旧件管理（服务站）** |  | 8d | 2017-08-01 | 2017-08-10 | 15d |  |  | 24h |
| 231 | 2.13.1 | 旧件回运清单维护 |  | 2d | 2017-08-01 | 2017-08-02 | 21d | start no earlier than 2017-08-01 | PG-TBD | 16h |
| 232 | 2.13.2 | 扣件抵扣通知单 |  | 1d | 2017-08-10 | 2017-08-10 | 15d | start no earlier than 2017-08-10 | PG-TBD | 8h |
| 233 | 2.14 | **供应商索赔（主机厂）** |  | 1d | 2017-08-11 | 2017-08-11 | 14d |  |  | 8h |
| 234 | 2.14.1 | 供应商出库索赔 |  | 1d | 2017-08-11 | 2017-08-11 | 14d | start no earlier than 2017-08-11 | PG-TBD | 8h |
| 235 | 2.15 | **客户关系管理** |  | 17d | 2017-07-07 | 2017-07-31 | 23d |  |  | 48h |
| 236 | 2.15.1 | **客户回访（主机厂）** |  | 1d | 2017-07-07 | 2017-07-07 | 39d |  |  | 8h |
| 237 | 2.15.1.1 | 问卷管理 | milestone | 0d | 2017-07-07 | 2017-07-07 | 40d | start no earlier than 2017-07-07 | DM-王瀚贤 |  |
| 238 | 2.15.1.2 | 问卷查询 | milestone | 0d | 2017-07-07 | 2017-07-07 | 40d | start no earlier than 2017-07-07 | DM-王瀚贤 |  |
| 239 | 2.15.1.3 | 生成客户回访 | milestone | 0d | 2017-07-07 | 2017-07-07 | 40d | start no earlier than 2017-07-07 | DM-王瀚贤 |  |
| 240 | 2.15.1.4 | 批量设置问卷 | milestone | 0d | 2017-07-07 | 2017-07-07 | 40d | start no earlier than 2017-07-07 | DM-王瀚贤 |  |
| 241 | 2.15.1.5 | 分配回访任务 | milestone | 0d | 2017-07-07 | 2017-07-07 | 40d | start no earlier than 2017-07-07 | DM-王瀚贤 |  |
| 242 | 2.15.1.6 | 客户回访管理 | milestone | 0d | 2017-07-07 | 2017-07-07 | 40d | start no earlier than 2017-07-07 | DM-王瀚贤 |  |
| 243 | 2.15.1.7 | 我的客户回访 | milestone | 0d | 2017-07-07 | 2017-07-07 | 40d | start no earlier than 2017-07-07 | DM-王瀚贤 |  |
| 244 | 2.15.1.8 | 待处理回访查询 | milestone | 0d | 2017-07-07 | 2017-07-07 | 40d | start no earlier than 2017-07-07 | DM-王瀚贤 |  |
| 245 | 2.15.1.9 | 客户回访查询 | milestone | 0d | 2017-07-07 | 2017-07-07 | 40d | start no earlier than 2017-07-07 | DM-王瀚贤 |  |
| 246 | 2.15.1.10 | 回访进度查询 |  | 1d | 2017-07-07 | 2017-07-07 | 39d | start no earlier than 2017-07-07 | DM-王瀚贤 | 8h |

| ID | WBS | Task | Type | Duration | Start | Finish | Total slack | Constraint | Resources | Work |
| --- | --- | --- | --- | --- | --- | --- | --- | --- | --- | --- |
| 247 | 2.15.2 | **咨询投诉（主机厂）** |  | 4d | 2017-07-25 | 2017-07-31 | 24d |  |  | 24h |
| 248 | 2.15.2.1 | 咨询投诉管理 |  | 1d | 2017-07-25 | 2017-07-25 | 27d | start no earlier than 2017-07-25 | PG-TBD | 8h |
| 249 | 2.15.2.2 | 咨询投诉处理（总部） |  | 1d | 2017-07-26 | 2017-07-26 | 26d | start no earlier than 2017-07-26 | PG-TBD | 8h |
| 250 | 2.15.2.3 | 咨询投诉处理（大区） |  | 1d | 2017-07-27 | 2017-07-27 | 25d | start no earlier than 2017-07-27 | PG-TBD | 8h |
| 251 | 2.15.2.4 | 咨询投诉查询 | milestone | 0d | 2017-07-31 | 2017-07-31 | 24d | start no earlier than 2017-07-31 | PG-TBD |  |
| 252 | 2.15.3 | **咨询投诉管理（服务站）** |  | 2d | 2017-07-28 | 2017-07-31 | 23d |  |  | 16h |
| 253 | 2.15.3.1 | 投诉单新增 |  | 1d | 2017-07-28 | 2017-07-28 | 24d | start no earlier than 2017-07-28 | PG-TBD | 8h |
| 254 | 2.15.3.2 | 投诉单处理 | milestone | 0d | 2017-07-31 | 2017-07-31 | 24d | start no earlier than 2017-07-31 | PG-TBD |  |
| 255 | 2.15.3.3 | 咨询投诉查询 |  | 1d | 2017-07-31 | 2017-07-31 | 23d | start no earlier than 2017-07-31 | PG-TBD | 8h |
| 256 | 3 | **整车销售** |  | 41d | 2017-07-04 | 2017-08-29 |  |  |  | 984h |
| 257 | 3.1 | **系统功能** |  | 1d? | 2017-07-04 | 2017-07-04 | 42d |  |  | 120h |
| 258 | 3.1.1 | **个人信息管理** |  | 1d? | 2017-07-04 | 2017-07-04 | 42d |  |  | 24h |
| 259 | 3.1.1.1 | 个人信息维护 |  | 1d? | 2017-07-04 | 2017-07-04 | 42d | start no earlier than 2017-07-04 | PG-张学富 | 8h |
| 260 | 3.1.1.2 | 密码修改 |  | 1d? | 2017-07-04 | 2017-07-04 | 42d |  | PG-张学富 | 8h |
| 261 | 3.1.1.3 | 首页新闻 |  | 1d? | 2017-07-04 | 2017-07-04 | 42d |  | PG-张学富 | 8h |
| 262 | 3.1.2 | **权限管理** |  | 1d? | 2017-07-04 | 2017-07-04 | 42d |  |  | 32h |
| 263 | 3.1.2.1 | 角色维护 |  | 1d? | 2017-07-04 | 2017-07-04 | 42d |  | PG-张学富 | 8h |
| 264 | 3.1.2.2 | 职位维护 |  | 1d? | 2017-07-04 | 2017-07-04 | 42d |  | PG-张学富 | 8h |
| 265 | 3.1.2.3 | 用户维护 |  | 1d? | 2017-07-04 | 2017-07-04 | 42d |  | PG-张学富 | 8h |
| 266 | 3.1.2.4 | 经销商用户维护 |  | 1d? | 2017-07-04 | 2017-07-04 | 42d |  | PG-张学富 | 8h |
| 267 | 3.1.3 | **组织管理** |  | 1d? | 2017-07-04 | 2017-07-04 | 42d |  |  | 24h |
| 268 | 3.1.3.1 | 公司组织维护 |  | 1d? | 2017-07-04 | 2017-07-04 | 42d |  | PG-张学富 | 8h |
| 269 | 3.1.3.2 | 车厂公司维护 |  | 1d? | 2017-07-04 | 2017-07-04 | 42d |  | PG-张学富 | 8h |
| 270 | 3.1.3.3 | 经销商公司维护 |  | 1d? | 2017-07-04 | 2017-07-04 | 42d |  | PG-张学富 | 8h |

| ID | WBS | Task | Duration | Start | Finish | Total slack | Constraint | Resources | Work |
| --- | --- | --- | --- | --- | --- | --- | --- | --- | --- |
| 271 | 3.1.4 | **产品维护** | 1d? | 2017-07-04 | 2017-07-04 | 42d |  |  | 16h |
| 272 | 3.1.4.1 | 物料组维护 | 1d? | 2017-07-04 | 2017-07-04 | 42d |  | PG-张学富 | 8h |
| 273 | 3.1.4.2 | 物料维护 | 1d? | 2017-07-04 | 2017-07-04 | 42d |  | PG-张学富 | 8h |
| 274 | 3.1.5 | **经销商管理** | 1d? | 2017-07-04 | 2017-07-04 | 42d |  | PG-张学富 | 24h |
| 275 | 3.1.5.1 | 经销商维护 | 1d? | 2017-07-04 | 2017-07-04 | 42d |  | PG-张学富 | 8h |
| 276 | 3.1.5.2 | 经销商查询 | 1d? | 2017-07-04 | 2017-07-04 | 42d |  | PG-张学富 | 8h |
| 277 | 3.2 | **基础数据** | 3d? | 2017-07-04 | 2017-07-06 | 40d |  |  | 48h |
| 278 | 3.2.1 | **基础数据** | 3d? | 2017-07-04 | 2017-07-06 | 40d |  |  | 48h |
| 279 | 3.2.1.1 | 车厂仓库维护 | 1d? | 2017-07-05 | 2017-07-05 | 41d | start no earlier than 2017-07-05 | PG-张学富 | 8h |
| 280 | 3.2.1.2 | 销售订单审核员与区域关系 | 1d? | 2017-07-04 | 2017-07-04 | 42d |  | PG-张学富 | 8h |
| 281 | 3.2.1.3 | 资金类型 | 1d? | 2017-07-05 | 2017-07-05 | 41d | start no earlier than 2017-07-05 | PG-张学富 | 8h |
| 282 | 3.2.1.4 | 意向等级和跟进天数 | 1d? | 2017-07-05 | 2017-07-05 | 41d | start no earlier than 2017-07-05 | PG-张学富 | 8h |
| 283 | 3.2.1.5 | 价格列表 | 1d? | 2017-07-04 | 2017-07-04 | 42d |  | PG-张学富 | 8h |
| 284 | 3.2.1.6 | 竞品车型 | 1d? | 2017-07-06 | 2017-07-06 | 40d | start no earlier than 2017-07-06 | PG-张学富 | 8h |
| 285 | 3.3 | **需求管理** | 4d? | 2017-07-07 | 2017-07-12 | 36d |  |  | 48h |
| 286 | 3.3.1 | **月度需求管理** | 4d? | 2017-07-07 | 2017-07-12 | 36d |  |  | 48h |
| 287 | 3.3.1.1 | 月度需求预测提报 | 2d? | 2017-07-07 | 2017-07-10 | 38d | finish no earlier than 2017-07-10 | PG-张学富 | 16h |
| 288 | 3.3.1.2 | 月度需求预测查询(经销商) | 1d? | 2017-07-10 | 2017-07-10 | 38d | start no earlier than 2017-07-10 | PG-张学富 | 8h |
| 289 | 3.3.1.3 | 月度需求预测审核（区域） | 1d? | 2017-07-11 | 2017-07-11 | 37d | start no earlier than 2017-07-11 | PG-张学富 | 8h |
| 290 | 3.3.1.4 | 月度需求预测审核（车厂） | 1d? | 2017-07-12 | 2017-07-12 | 36d | start no earlier than 2017-07-12 | PG-张学富 | 8h |
| 291 | 3.3.1.5 | 月度需求预测查询（车厂/区域） | 1d? | 2017-07-12 | 2017-07-12 | 36d | start no earlier than 2017-07-12 | PG-张学富 | 8h |
| 292 | 3.4 | **任务管理** | 4d? | 2017-07-13 | 2017-07-18 | 32d |  |  | 64h |
| 293 | 3.4.1 | **年度任务管理** | 2d? | 2017-07-13 | 2017-07-14 | 34d |  |  | 32h |
| 294 | 3.4.1.1 | 年度任务导入 | 2d? | 2017-07-13 | 2017-07-14 | 34d | finish no earlier than 2017-07-14 | PG-张学富 | 16h |
| 295 | 3.4.1.2 | 年度任务查询（车厂/区域） | 1d? | 2017-07-14 | 2017-07-14 | 34d | start no earlier than 2017-07-14 | PG-张学富 | 8h |
| 296 | 3.4.1.3 | 年度任务查询（经销商） | 1d? | 2017-07-14 | 2017-07-14 | 34d | start no earlier than 2017-07-14 | PG-张学富 | 8h |

| ID | WBS | Task | Duration | Start | Finish | Total slack | Constraint | Resources | Work |
| --- | --- | --- | --- | --- | --- | --- | --- | --- | --- |
| 297 | 3.4.2 | **月度任务管理** | 2d? | 2017-07-17 | 2017-07-18 | 32d |  |  | 32h |
| 298 | 3.4.2.1 | 月度任务导入 | 2d? | 2017-07-17 | 2017-07-18 | 32d | finish no earlier than 2017-07-18 | PG-张学富 | 16h |
| 299 | 3.4.2.2 | 月度任务查询（车厂/区域） | 1d? | 2017-07-18 | 2017-07-18 | 32d | start no earlier than 2017-07-18 | PG-张学富 | 8h |
| 300 | 3.4.2.3 | 月度任务查询（经销商） | 1d? | 2017-07-18 | 2017-07-18 | 32d | start no earlier than 2017-07-18 | PG-张学富 | 8h |
| 301 | 3.5 | **订单管理** | 8d? | 2017-07-19 | 2017-07-28 | 24d |  |  | 112h |
| 302 | 3.5.1 | **批售订单管理** | 5d? | 2017-07-19 | 2017-07-25 | 27d |  |  | 72h |
| 303 | 3.5.1.1 | 批售订单提报 | 2d? | 2017-07-19 | 2017-07-20 | 30d | finish no earlier than 2017-07-20 | PG-张学富 | 16h |
| 304 | 3.5.1.2 | 批售订单查询（经销商） | 1d? | 2017-07-20 | 2017-07-20 | 30d | start no earlier than 2017-07-20 | PG-张学富 | 8h |
| 305 | 3.5.1.3 | 批售订单初核 | 3d? | 2017-07-21 | 2017-07-25 | 27d | finish no earlier than 2017-07-25 | PG-张学富 | 24h |
| 306 | 3.5.1.4 | 批售订单终审 | 1d? | 2017-07-25 | 2017-07-25 | 27d | start no earlier than 2017-07-25 | PG-张学富 | 8h |
| 307 | 3.5.1.5 | 批售订单储运确认 | 1d? | 2017-07-25 | 2017-07-25 | 27d | start no earlier than 2017-07-25 | PG-张学富 | 8h |
| 308 | 3.5.1.6 | 批售订单查询（车厂/区域） | 1d? | 2017-07-25 | 2017-07-25 | 27d | start no earlier than 2017-07-25 | PG-张学富 | 8h |
| 309 | 3.5.2 | **特价车管理** | 3d? | 2017-07-26 | 2017-07-28 | 24d |  |  | 40h |
| 310 | 3.5.2.1 | 特价车维护 | 1d? | 2017-07-26 | 2017-07-26 | 26d | start no earlier than 2017-07-26 | PG-张学富 | 8h |
| 311 | 3.5.2.2 | 特价车订单提报 | 1d? | 2017-07-27 | 2017-07-27 | 25d | start no earlier than 2017-07-27 | PG-张学富 | 8h |
| 312 | 3.5.2.3 | 特价车审核 | 1d? | 2017-07-27 | 2017-07-27 | 25d | start no earlier than 2017-07-27 | PG-张学富 | 8h |
| 313 | 3.5.2.4 | 特价车订单查询（车厂/区域） | 1d? | 2017-07-28 | 2017-07-28 | 24d | start no earlier than 2017-07-28 | PG-张学富 | 8h |
| 314 | 3.5.2.5 | 特价车订单查询（经销商） | 1d? | 2017-07-28 | 2017-07-28 | 24d | start no earlier than 2017-07-28 | PG-张学富 | 8h |
| 315 | 3.6 | **经销商库存管理** | 9d? | 2017-07-31 | 2017-08-10 | 15d |  |  | 208h |
| 316 | 3.6.1 | **验收入库** | 4d? | 2017-07-31 | 2017-08-03 | 20d |  |  | 56h |
| 317 | 3.6.1.1 | 在途查询 | 3d? | 2017-07-31 | 2017-08-02 | 21d | finish no earlier than 2017-08-02 | PG-张学富 | 24h |
| 318 | 3.6.1.2 | 验收入库 | 1d? | 2017-08-03 | 2017-08-03 | 20d | start no earlier than 2017-08-03 | PG-张学富 | 8h |
| 319 | 3.6.1.3 | 验收查询（经销商） | 1d? | 2017-08-03 | 2017-08-03 | 20d | start no earlier than 2017-08-03 | PG-张学富 | 8h |
| 320 | 3.6.1.4 | 在途查询（车厂/区域） | 1d? | 2017-08-03 | 2017-08-03 | 20d | start no earlier than 2017-08-03 | PG-张学富 | 8h |
| 321 | 3.6.1.5 | 验收查询（车厂/区域） | 1d? | 2017-08-03 | 2017-08-03 | 20d | start no earlier than 2017-08-03 | PG-张学富 | 8h |

| ID | WBS | Task | Duration | Start | Finish | Total slack | Constraint | Resources | Work |
| --- | --- | --- | --- | --- | --- | --- | --- | --- | --- |
| 322 | 3.6.2 | **库存管理** | 5d? | 2017-08-04 | 2017-08-10 | 15d |  |  | 152h |
| 323 | 3.6.2.1 | 经销商仓库维护 | 1d? | 2017-08-04 | 2017-08-04 | 19d | start no earlier than 2017-08-04 | PG-张学富 | 8h |
| 324 | 3.6.2.2 | 库存查询（经销商） | 1d? | 2017-08-04 | 2017-08-04 | 19d | start no earlier than 2017-08-04 | PG-张学富 | 8h |
| 325 | 3.6.2.3 | 经销商库存查询（车厂/区域） | 1d? | 2017-08-04 | 2017-08-04 | 19d | start no earlier than 2017-08-04 | PG-张学富 | 8h |
| 326 | 3.6.2.4 | 退车申请 | 1d? | 2017-08-04 | 2017-08-04 | 19d | start no earlier than 2017-08-04 | PG-张学富 | 8h |
| 327 | 3.6.2.5 | 退车审核(区域) | 1d? | 2017-08-04 | 2017-08-04 | 19d | start no earlier than 2017-08-04 | PG-张学富 | 8h |
| 328 | 3.6.2.6 | 退车审核(销售部) | 1d? | 2017-08-04 | 2017-08-04 | 19d | start no earlier than 2017-08-04 | PG-张学富 | 8h |
| 329 | 3.6.2.7 | 退车审核（储运部） | 2d? | 2017-08-04 | 2017-08-07 | 18d | finish no earlier than 2017-08-07 | PG-张学富 | 16h |
| 330 | 3.6.2.8 | 退车入库确认(财务部) | 2d? | 2017-08-08 | 2017-08-09 | 16d | finish no earlier than 2017-08-09 | PG-张学富 | 16h |
| 331 | 3.6.2.9 | 退车查询（经销商） | 1d? | 2017-08-10 | 2017-08-10 | 15d | start no earlier than 2017-08-10 | PG-张学富 | 8h |
| 332 | 3.6.2.10 | 退车查询（车厂/区域） | 1d? | 2017-08-10 | 2017-08-10 | 15d | start no earlier than 2017-08-10 | PG-张学富 | 8h |
| 333 | 3.6.2.11 | 批发申请 | 1d? | 2017-08-10 | 2017-08-10 | 15d | start no earlier than 2017-08-10 | PG-张学富 | 8h |
| 334 | 3.6.2.12 | 批发申请审核（区域） | 1d? | 2017-08-10 | 2017-08-10 | 15d | start no earlier than 2017-08-10 | PG-张学富 | 8h |
| 335 | 3.6.2.13 | 批发申请审核（车厂） | 1d? | 2017-08-10 | 2017-08-10 | 15d | start no earlier than 2017-08-10 | PG-张学富 | 8h |
| 336 | 3.6.2.14 | 批发出库 | 1d? | 2017-08-10 | 2017-08-10 | 15d | start no earlier than 2017-08-10 | PG-张学富 | 8h |
| 337 | 3.6.2.15 | 批发入库 | 1d? | 2017-08-10 | 2017-08-10 | 15d | start no earlier than 2017-08-10 | PG-张学富 | 8h |
| 338 | 3.6.2.16 | 批发查询（经销商） | 1d? | 2017-08-10 | 2017-08-10 | 15d | start no earlier than 2017-08-10 | PG-张学富 | 8h |
| 339 | 3.6.2.17 | 批发查询（车厂/区域） | 1d? | 2017-08-10 | 2017-08-10 | 15d | start no earlier than 2017-08-10 | PG-张学富 | 8h |
| 340 | 3.7 | **潜客管理** | 4d? | 2017-08-11 | 2017-08-16 | 11d |  |  | 152h |
| 341 | 3.7.1 | **任务管理** | 1d? | 2017-08-11 | 2017-08-11 | 14d |  |  | 8h |
| 342 | 3.7.1.1 | 任务列表 | 1d? | 2017-08-11 | 2017-08-11 | 14d | start no earlier than 2017-08-11 | PG-张学富 | 8h |
| 343 | 3.7.2 | **线索管理** | 1d? | 2017-08-11 | 2017-08-11 | 14d |  |  | 72h |
| 344 | 3.7.2.1 | DCRC客流录入 | 1d? | 2017-08-11 | 2017-08-11 | 14d | start no earlier than 2017-08-11 | PG-张学富 | 8h |
| 345 | 3.7.2.2 | 顾问线索录/导入 | 1d? | 2017-08-11 | 2017-08-11 | 14d | start no earlier than 2017-08-11 | PG-张学富 | 8h |
| 346 | 3.7.2.3 | 导入经销商线索 | 1d? | 2017-08-11 | 2017-08-11 | 14d | start no earlier than 2017-08-11 | PG-张学富 | 8h |
| 347 | 3.7.2.4 | 线索分派 | 1d? | 2017-08-11 | 2017-08-11 | 14d | start no earlier than 2017-08-11 | PG-张学富 | 8h |
| 348 | 3.7.2.5 | 线索处理 | 1d? | 2017-08-11 | 2017-08-11 | 14d | start no earlier than 2017-08-11 | PG-张学富 | 8h |
| 349 | 3.7.2.6 | 线索查询（经销商） | 1d? | 2017-08-11 | 2017-08-11 | 14d | start no earlier than 2017-08-11 | PG-张学富 | 8h |
| 350 | 3.7.2.7 | 线索查询（车厂/区域） | 1d? | 2017-08-11 | 2017-08-11 | 14d | start no earlier than 2017-08-11 | PG-张学富 | 8h |
| 351 | 3.7.2.8 | 客户查询（经销商） | 1d? | 2017-08-11 | 2017-08-11 | 14d | start no earlier than 2017-08-11 | PG-张学富 | 8h |
| 352 | 3.7.2.9 | 客户查询（车厂/区域） | 1d? | 2017-08-11 | 2017-08-11 | 14d | start no earlier than 2017-08-11 | PG-张学富 | 8h |

| ID | WBS | Task | Duration | Start | Finish | Total slack | Constraint | Resources | Work |
| --- | --- | --- | --- | --- | --- | --- | --- | --- | --- |
| 353 | 3.7.3 | **跟进管理** | 1d? | 2017-08-14 | 2017-08-14 | 13d |  |  | 24h |
| 354 | 3.7.3.1 | 跟进处理 | 1d? | 2017-08-14 | 2017-08-14 | 13d | start no earlier than 2017-08-14 | PG-张学富 | 8h |
| 355 | 3.7.3.2 | 跟进查询（经销商） | 1d? | 2017-08-14 | 2017-08-14 | 13d | start no earlier than 2017-08-14 | PG-张学富 | 8h |
| 356 | 3.7.3.3 | 跟进管理（车厂/区域） | 1d? | 2017-08-14 | 2017-08-14 | 13d | start no earlier than 2017-08-14 | PG-张学富 | 8h |
| 357 | 3.7.4 | **战败管理** | 1d? | 2017-08-15 | 2017-08-15 | 12d |  |  | 24h |
| 358 | 3.7.4.1 | 战败申请审核 | 1d? | 2017-08-15 | 2017-08-15 | 12d | start no earlier than 2017-08-15 | PG-张学富 | 8h |
| 359 | 3.7.4.2 | 战败申请查询（经销商） | 1d? | 2017-08-15 | 2017-08-15 | 12d | start no earlier than 2017-08-15 | PG-张学富 | 8h |
| 360 | 3.7.4.3 | 战败申请查询（车厂/区域） | 1d? | 2017-08-15 | 2017-08-15 | 12d | start no earlier than 2017-08-15 | PG-张学富 | 8h |
| 361 | 3.7.5 | **新车回访管理** | 1d? | 2017-08-16 | 2017-08-16 | 11d |  |  | 24h |
| 362 | 3.7.5.1 | 新车回访处理 | 1d? | 2017-08-16 | 2017-08-16 | 11d | start no earlier than 2017-08-16 | PG-张学富 | 8h |
| 363 | 3.7.5.2 | 新车回访查询（经销商） | 1d? | 2017-08-16 | 2017-08-16 | 11d | start no earlier than 2017-08-16 | PG-张学富 | 8h |
| 364 | 3.7.5.3 | 新车回访查询（车厂/区域） | 1d? | 2017-08-16 | 2017-08-16 | 11d | start no earlier than 2017-08-16 | PG-张学富 | 8h |
| 365 | 3.8 | **实销管理** | 2d? | 2017-08-17 | 2017-08-18 | 9d |  |  | 120h |
| 366 | 3.8.1 | 实销信息上报 | 1d? | 2017-08-17 | 2017-08-17 | 10d | start no earlier than 2017-08-17 | PG-张学富 | 8h |
| 367 | 3.8.2 | 实销信息查询（经销商） | 1d? | 2017-08-17 | 2017-08-17 | 10d | start no earlier than 2017-08-17 | PG-张学富 | 8h |
| 368 | 3.8.3 | 实销信息查询（车厂/区域） | 1d? | 2017-08-17 | 2017-08-17 | 10d | start no earlier than 2017-08-17 | PG-张学富 | 8h |
| 369 | 3.8.4 | 实销客户更改申请 | 1d? | 2017-08-17 | 2017-08-17 | 10d | start no earlier than 2017-08-17 | PG-张学富 | 8h |
| 370 | 3.8.5 | 实销信息更改审核（区域） | 1d? | 2017-08-17 | 2017-08-17 | 10d | start no earlier than 2017-08-17 | PG-张学富 | 8h |
| 371 | 3.8.6 | 实销信息更改审核（车厂） | 1d? | 2017-08-17 | 2017-08-17 | 10d | start no earlier than 2017-08-17 | PG-张学富 | 8h |
| 372 | 3.8.7 | 实销信息更改查询（经销商） | 1d? | 2017-08-17 | 2017-08-17 | 10d | start no earlier than 2017-08-17 | PG-张学富 | 8h |
| 373 | 3.8.8 | 实销信息更改查询（车厂/区域） | 1d? | 2017-08-17 | 2017-08-17 | 10d | start no earlier than 2017-08-17 | PG-张学富 | 8h |
| 374 | 3.8.9 | 实销退车申请 | 1d? | 2017-08-17 | 2017-08-17 | 10d | start no earlier than 2017-08-17 | PG-张学富 | 8h |
| 375 | 3.8.10 | 实销退车审核（区域） | 1d? | 2017-08-17 | 2017-08-17 | 10d | start no earlier than 2017-08-17 | PG-张学富 | 8h |
| 376 | 3.8.11 | 实销退车审核（销售部） | 1d? | 2017-08-17 | 2017-08-17 | 10d | start no earlier than 2017-08-17 | PG-张学富 | 8h |
| 377 | 3.8.12 | 实销退车审核（售后部） | 2d? | 2017-08-17 | 2017-08-18 | 9d | finish no earlier than 2017-08-18 | PG-张学富 | 16h |
| 378 | 3.8.13 | 实销退车查询（经销商） | 1d? | 2017-08-18 | 2017-08-18 | 9d | start no earlier than 2017-08-18 | PG-张学富 | 8h |
| 379 | 3.8.14 | 实销退车查询（车厂/区域） | 1d? | 2017-08-18 | 2017-08-18 | 9d | start no earlier than 2017-08-18 | PG-张学富 | 8h |

| ID | WBS | Task | Type | Duration | Start | Finish | Predecessors | Total slack | Constraint | Resources | Work |
| --- | --- | --- | --- | --- | --- | --- | --- | --- | --- | --- | --- |
| 380 | 3.9 | **财务管理** |  | 7d? | 2017-08-21 | 2017-08-29 |  | 2d |  |  | 112h |
| 381 | 3.9.1 | **财务收款** |  | 1d? | 2017-08-21 | 2017-08-21 |  | 8d |  |  | 16h |
| 382 | 3.9.1.1 | 收款记录录入 |  | 1d? | 2017-08-21 | 2017-08-21 |  | 8d | start no earlier than 2017-08-21 | PG-张学富 | 8h |
| 383 | 3.9.1.2 | 收款记录查询 |  | 1d? | 2017-08-21 | 2017-08-21 |  | 8d | start no earlier than 2017-08-21 | PG-张学富 | 8h |
| 384 | 3.9.2 | **发票管理** |  | 2d? | 2017-08-22 | 2017-08-23 |  | 6d |  |  | 32h |
| 385 | 3.9.2.1 | 发票录入/导入 |  | 2d? | 2017-08-22 | 2017-08-23 |  | 6d | finish no earlier than 2017-08-23 | PG-张学富 | 16h |
| 386 | 3.9.2.2 | 发票查询（车厂/区域） |  | 1d? | 2017-08-23 | 2017-08-23 |  | 6d | start no earlier than 2017-08-23 | PG-张学富 | 8h |
| 387 | 3.9.2.3 | 发票查询（经销商） |  | 1d? | 2017-08-23 | 2017-08-23 |  | 6d | start no earlier than 2017-08-23 | PG-张学富 | 8h |
| 388 | 3.9.3 | **返利管理** |  | 2d? | 2017-08-24 | 2017-08-25 |  | 4d |  |  | 32h |
| 389 | 3.9.3.1 | 返利导入 |  | 2d? | 2017-08-24 | 2017-08-25 |  | 4d | finish no earlier than 2017-08-25 | PG-张学富 | 16h |
| 390 | 3.9.3.2 | 返利查询（车厂/区域） |  | 1d? | 2017-08-25 | 2017-08-25 |  | 4d | start no earlier than 2017-08-25 | PG-张学富 | 8h |
| 391 | 3.9.3.3 | 返利查询（经销商） |  | 1d? | 2017-08-25 | 2017-08-25 |  | 4d | start no earlier than 2017-08-25 | PG-张学富 | 8h |
| 392 | 3.9.4 | **财务付款** |  | 1d? | 2017-08-28 | 2017-08-28 |  | 3d |  |  | 16h |
| 393 | 3.9.4.1 | 付款记录录入 |  | 1d? | 2017-08-28 | 2017-08-28 |  | 3d | start no earlier than 2017-08-28 | PG-张学富 | 8h |
| 394 | 3.9.4.2 | 付款记录查询 |  | 1d? | 2017-08-28 | 2017-08-28 |  | 3d | start no earlier than 2017-08-28 | PG-张学富 | 8h |
| 395 | 3.9.5 | **经销商付款管理** |  | 1d? | 2017-08-29 | 2017-08-29 |  | 2d |  |  | 8h |
| 396 | 3.9.5.1 | 经销商付款查询 |  | 1d? | 2017-08-29 | 2017-08-29 |  | 2d | start no earlier than 2017-08-29 | PG-张学富 | 8h |
| 397 | 3.9.6 | **经销商收款管理** |  | 1d? | 2017-08-29 | 2017-08-29 |  | 2d |  |  | 8h |
| 398 | 3.9.6.1 | 经销商收款查询 |  | 1d? | 2017-08-29 | 2017-08-29 |  | 2d | start no earlier than 2017-08-29 | PG-张学富 | 8h |
| 399 | 4 | **整车物流** |  | 43d | 2017-07-04 | 2017-08-31 |  | 0d |  |  | 432h |
| 400 | 4.1 | **储运基础管理（主机厂）** |  | 3d | 2017-07-04 | 2017-07-06 |  | 0d |  |  | 24h |
| 401 | 4.1.1 | 仓库管理 |  | 1d | 2017-07-04 | 2017-07-04 |  | 0d | start no earlier than 2017-07-04 | PG-舒应洪 | 8h |
| 402 | 4.1.2 | 运费系数管理 | milestone | 0d | 2017-07-04 | 2017-07-04 | 401 | 0d |  | PG-舒应洪 |  |
| 403 | 4.1.3 | 城市里程数管理 |  | 1d | 2017-07-05 | 2017-07-05 | 402 | 0d |  | PG-舒应洪 | 8h |
| 404 | 4.1.4 | 物流商管理 |  | 1d | 2017-07-06 | 2017-07-06 | 403 | 0d |  | PG-舒应洪 | 8h |

| ID | WBS | Task | Type | Duration | Start | Finish | Predecessors | Total slack | Resources | Work |
| --- | --- | --- | --- | --- | --- | --- | --- | --- | --- | --- |
| 405 | 4.2 | **储运基础管理（物流商）** |  | 1d | 2017-07-07 | 2017-07-07 |  | 0d |  | 8h |
| 406 | 4.2.1 | 物流人员管理 |  | 1d | 2017-07-07 | 2017-07-07 | 404 | 0d | PG-舒应洪 | 8h |
| 407 | 4.3 | **储运仓库管理（主机厂）** |  | 37d | 2017-07-10 | 2017-08-29 |  | 0d |  | 48h |
| 408 | 4.3.1 | 整车库存查询 |  | 1d | 2017-08-25 | 2017-08-25 | 446 | 0d | PG-舒应洪 | 8h |
| 409 | 4.3.2 | 详细车籍查询 |  | 1d | 2017-08-28 | 2017-08-28 | 408 | 0d | PG-舒应洪 | 8h |
| 410 | 4.3.3 | 车辆导入[临时] |  | 1d | 2017-07-10 | 2017-07-10 | 406 | 0d | PG-舒应洪 | 8h |
| 411 | 4.3.4 | 车辆入库[临时] |  | 1d | 2017-07-11 | 2017-07-11 | 410 | 0d | PG-舒应洪 | 8h |
| 412 | 4.3.5 | 车辆出库[临时] |  | 1d | 2017-07-12 | 2017-07-12 | 411 | 0d | PG-舒应洪 | 8h |
| 413 | 4.3.6 | 车辆库龄查询 |  | 1d | 2017-08-29 | 2017-08-29 | 409 | 0d | PG-舒应洪 | 8h |
| 414 | 4.4 | **储运发运管理（主机厂）** |  | 36d | 2017-07-13 | 2017-08-31 |  | 0d |  | 120h |
| 415 | 4.4.1 | 批售订单查询 |  | 1d | 2017-07-13 | 2017-07-13 | 412 | 0d | PG-舒应洪 | 8h |
| 416 | 4.4.2 | 调拨单管理 |  | 2d | 2017-07-14 | 2017-07-17 | 415 | 0d | PG-舒应洪 | 16h |
| 417 | 4.4.3 | 调拨单查询 |  | 1d | 2017-07-18 | 2017-07-18 | 416 | 0d | PG-舒应洪 | 8h |
| 418 | 4.4.4 | 发运分派管理 |  | 2d | 2017-07-19 | 2017-07-20 | 417 | 0d | PG-舒应洪 | 16h |
| 419 | 4.4.5 | 发运分派更改 |  | 1d | 2017-07-21 | 2017-07-21 | 418 | 0d | PG-舒应洪 | 8h |
| 420 | 4.4.6 | 发运分派查询 |  | 1d | 2017-07-24 | 2017-07-24 | 419 | 0d | PG-舒应洪 | 8h |
| 421 | 4.4.7 | 发运计划发送 |  | 1d | 2017-08-01 | 2017-08-01 | 431 | 0d | PG-舒应洪 | 8h |
| 422 | 4.4.8 | 发运计划查询 |  | 1d | 2017-08-02 | 2017-08-02 | 421 | 0d | PG-舒应洪 | 8h |
| 423 | 4.4.9 | 发运交接单管理 |  | 2d | 2017-08-04 | 2017-08-07 | 432 | 0d | PG-舒应洪 | 16h |
| 424 | 4.4.10 | 发运交接单查询 |  | 1d | 2017-08-08 | 2017-08-08 | 423 | 0d | PG-舒应洪 | 8h |
| 425 | 4.4.11 | 发运共享资源处理 |  | 1d | 2017-08-30 | 2017-08-30 | 413 | 0d | PG-舒应洪 | 8h |
| 426 | 4.4.12 | 发运共享资源确认 |  | 1d | 2017-08-31 | 2017-08-31 | 425 | 0d | PG-舒应洪 | 8h |
| 427 | 4.4.13 | 在途位置查询 | milestone | 0d | 2017-08-15 | 2017-08-15 | 435 | 0d | PG-舒应洪 |  |
| 428 | 4.5 | **储运发运管理（物流商）** |  | 17d | 2017-07-25 | 2017-08-16 |  | 0d |  | 96h |
| 429 | 4.5.1 | 发运组板管理 |  | 3d | 2017-07-25 | 2017-07-27 | 420 | 0d | PG-舒应洪 | 24h |
| 430 | 4.5.2 | 发运组板查询 |  | 1d | 2017-07-28 | 2017-07-28 | 429 | 0d | PG-舒应洪 | 8h |
| 431 | 4.5.3 | 发运司机调整 |  | 1d | 2017-07-31 | 2017-07-31 | 430 | 0d | PG-舒应洪 | 8h |
| 432 | 4.5.4 | 发运单打印 |  | 1d | 2017-08-03 | 2017-08-03 | 422 | 0d | PG-舒应洪 | 8h |
| 433 | 4.5.5 | 司机审核 |  | 1d | 2017-08-09 | 2017-08-09 | 424 | 0d | PG-舒应洪 | 8h |
| 434 | 4.5.6 | 司机车辆绑定 |  | 2d | 2017-08-10 | 2017-08-11 | 433 | 0d | PG-舒应洪 | 16h |
| 435 | 4.5.7 | 在途位置管理 |  | 2d | 2017-08-14 | 2017-08-15 | 434 | 0d | PG-舒应洪 | 16h |
| 436 | 4.5.8 | 在途位置查询 |  | 1d | 2017-08-16 | 2017-08-16 | 427 | 0d | PG-舒应洪 | 8h |

| ID | WBS | Task | Type | Duration | Start | Finish | Predecessors | Total slack | Free slack | Constraint | Resources | Work |
| --- | --- | --- | --- | --- | --- | --- | --- | --- | --- | --- | --- | --- |
| 437 | 4.6 | **储运发运管理（经销商）** |  | 0d | 2017-08-16 | 2017-08-16 |  | 0d |  |  |  |  |
| 438 | 4.6.1 | 在途位置查询 | milestone | 0d | 2017-08-16 | 2017-08-16 | 436 | 0d |  |  | PG-舒应洪 |  |
| 439 | 4.7 | **储运运费管理（主机厂）** |  | 5d | 2017-08-17 | 2017-08-23 |  | 0d |  |  |  | 40h |
| 440 | 4.7.1 | 运费挂账 |  | 2d | 2017-08-17 | 2017-08-18 | 438 | 0d |  |  | PG-舒应洪 | 16h |
| 441 | 4.7.2 | 运费结算审核 |  | 1d | 2017-08-21 | 2017-08-21 | 440 | 0d |  |  | PG-舒应洪 | 8h |
| 442 | 4.7.3 | 运费结算付款 |  | 1d | 2017-08-22 | 2017-08-22 | 441 | 0d |  |  | PG-舒应洪 | 8h |
| 443 | 4.7.4 | 运费结算查询 |  | 1d | 2017-08-23 | 2017-08-23 | 442 | 0d |  |  | PG-舒应洪 | 8h |
| 444 | 4.8 | **储运运费管理（物流商）** |  | 1d | 2017-08-24 | 2017-08-24 |  | 0d |  |  |  | 8h |
| 445 | 4.8.1 | 运费结算申请 |  | 1d | 2017-08-24 | 2017-08-24 | 443 | 0d |  |  | PG-舒应洪 | 8h |
| 446 | 4.8.2 | 运费发票补录 | milestone | 0d | 2017-08-24 | 2017-08-24 | 445 | 0d |  |  | PG-舒应洪 |  |
| 447 | 4.9 | **储运移动支持（物流商）** |  | 11d | 2017-08-07 | 2017-08-21 |  | 8d |  |  |  | 88h |
| 448 | 4.9.1 | 司机注册 |  | 3d | 2017-08-07 | 2017-08-09 |  | 8d | 0d | start no earlier than 2017-08-07 | PG-孟翰林 | 24h |
| 449 | 4.9.2 | 车辆扫描 |  | 2d | 2017-08-10 | 2017-08-11 | 448 | 8d | 0d |  | PG-孟翰林 | 16h |
| 450 | 4.9.3 | 在途位置上报 |  | 3d | 2017-08-14 | 2017-08-16 | 449 | 8d | 0d |  | PG-孟翰林 | 24h |
| 451 | 4.9.4 | 司机交车上报 |  | 3d | 2017-08-17 | 2017-08-21 | 450 | 8d |  |  | PG-孟翰林 | 24h |
